# iGo_WBS2

Schedule from MS Project, 2008-09-22 to 2009-01-27, status date 2008-10-21, 7 hours a day, A marks actual dates.

## Calendars

- Standard: Mon-Sun 09:00-12:00, 14:00-18:00. Exceptions (off unless hours are given): 2008-12-25 to 2008-12-31 (Noel), 2009-01-01 to 2009-01-04 (1er de l'an).

## Resources

| Resource |
| --- |
| Remi |
| Tony |
| Bryan |
| Elodie |
| Pierrick |

## Schedule

| ID | WBS | Task | Type | Duration | Start | Finish | Predecessors | Complete | Remaining | Baseline start | Baseline finish | Baseline duration | Total slack | Constraint | Resources | Work | Actual work |
| --- | --- | --- | --- | --- | --- | --- | --- | --- | --- | --- | --- | --- | --- | --- | --- | --- | --- |
| 1 | 1 | **Projet** |  | 117d? | 2008-09-22 A | 2009-01-27 |  | 19% | 94.94d? | 2008-09-22 | 2009-01-27 | 117d | 0d |  |  | 4096.61h | 866.11h |
| 2 | 1.1 | **Réunion hebdomadaire de l'équipe du projet** |  | 91d | 2008-09-22 A | 2008-12-22 |  |  | 91d | 2008-09-22 | 2008-12-22 | 91d | 26d |  |  |  |  |
| 3 | 1.1.1 | Réunion hebdomadaire de l'équipe du projet 1 | milestone | 0d | 2008-09-22 A | 2008-09-22 A |  | 100% |  | 2008-09-22 | 2008-09-22 | 0d |  | start no earlier than 2008-09-22 |  |  |  |
| 4 | 1.1.2 | Réunion hebdomadaire de l'équipe du projet 2 | milestone | 0d | 2008-09-29 A | 2008-09-29 A |  | 100% |  | 2008-09-29 | 2008-09-29 | 0d |  | start no earlier than 2008-09-29 |  |  |  |
| 5 | 1.1.3 | Réunion hebdomadaire de l'équipe du projet 3 | milestone | 0d | 2008-10-06 A | 2008-10-06 A |  | 100% |  | 2008-10-06 | 2008-10-06 | 0d |  | start no earlier than 2008-10-06 |  |  |  |
| 6 | 1.1.4 | Réunion hebdomadaire de l'équipe du projet 4 | milestone | 0d | 2008-10-13 A | 2008-10-13 A |  | 100% |  | 2008-10-13 | 2008-10-13 | 0d |  | start no earlier than 2008-10-13 |  |  |  |
| 7 | 1.1.5 | Réunion hebdomadaire de l'équipe du projet 5 | milestone | 0d | 2008-10-20 A | 2008-10-20 A |  | 100% |  | 2008-10-20 | 2008-10-20 | 0d |  | start no earlier than 2008-10-20 |  |  |  |
| 8 | 1.1.6 | Réunion hebdomadaire de l'équipe du projet 6 | milestone | 0d | 2008-10-27 | 2008-10-27 |  |  |  | 2008-10-27 | 2008-10-27 | 0d | 60.57d | start no earlier than 2008-10-27 |  |  |  |
| 9 | 1.1.7 | Réunion hebdomadaire de l'équipe du projet 7 | milestone | 0d | 2008-11-03 | 2008-11-03 |  |  |  | 2008-11-03 | 2008-11-03 | 0d | 53d | start no earlier than 2008-11-03 |  |  |  |
| 10 | 1.1.8 | Réunion hebdomadaire de l'équipe du projet 8 | milestone | 0d | 2008-11-10 | 2008-11-10 |  |  |  | 2008-11-10 | 2008-11-10 | 0d | 45.43d | start no earlier than 2008-11-10 |  |  |  |
| 11 | 1.1.9 | Réunion hebdomadaire de l'équipe du projet 9 | milestone | 0d | 2008-11-17 | 2008-11-17 |  |  |  | 2008-11-17 | 2008-11-17 | 0d | 37.86d | start no earlier than 2008-11-17 |  |  |  |
| 12 | 1.1.10 | Réunion hebdomadaire de l'équipe du projet 10 | milestone | 0d | 2008-11-24 | 2008-11-24 |  |  |  | 2008-11-24 | 2008-11-24 | 0d | 30.29d | start no earlier than 2008-11-24 |  |  |  |
| 13 | 1.1.11 | Réunion hebdomadaire de l'équipe du projet 11 | milestone | 0d | 2008-12-01 | 2008-12-01 |  |  |  | 2008-12-01 | 2008-12-01 | 0d | 22.71d | start no earlier than 2008-12-01 |  |  |  |
| 14 | 1.1.12 | Réunion hebdomadaire de l'équipe du projet 12 | milestone | 0d | 2008-12-08 | 2008-12-08 |  |  |  | 2008-12-08 | 2008-12-08 | 0d | 15.14d | start no earlier than 2008-12-08 |  |  |  |
| 15 | 1.1.13 | Réunion hebdomadaire de l'équipe du projet 13 | milestone | 0d | 2008-12-15 | 2008-12-15 |  |  |  | 2008-12-15 | 2008-12-15 | 0d | 7.57d | start no earlier than 2008-12-15 |  |  |  |
| 16 | 1.1.14 | Réunion hebdomadaire de l'équipe du projet 14 | milestone | 0d | 2008-12-22 | 2008-12-22 |  |  |  | 2008-12-22 | 2008-12-22 | 0d | 26.14d | start no earlier than 2008-12-22 |  |  |  |
| 17 | 1.2 | **Etude préalable** |  | 32d | 2008-09-22 A | 2008-10-23 A |  | 100% |  | 2008-09-22 | 2008-10-23 | 32d |  |  |  | 729.61h | 729.61h |
| 18 | 1.2.1 | Découpage prévisionnel |  | 1d | 2008-09-22 A | 2008-09-22 A |  | 100% |  | 2008-09-22 | 2008-09-22 | 1d |  |  | Remi; Elodie; Bryan; Tony; Pierrick | 35h | 35h |
| 19 | 1.2.2 | **Diagrammes fonctionnels (UML)** |  | 22d | 2008-09-23 A | 2008-10-14 A |  | 100% |  | 2008-09-23 | 2008-10-14 | 22d |  |  |  | 229.11h | 229.11h |
| 20 | 1.2.2.1 | Diagramme de classes |  | 10d | 2008-09-23 A | 2008-10-02 A | 18 | 100% |  | 2008-09-23 | 2008-10-02 | 10d |  |  | Bryan [50%]; Elodie [50%]; Remi [50%] | 105h | 105h |
| 21 | 1.2.2.2 | Diagrammes des cas d'utilisation |  | 10d | 2008-10-03 A | 2008-10-12 A | 20 | 100% |  | 2008-10-03 | 2008-10-12 | 10d |  |  | Pierrick [50%]; Remi [50%] | 56h | 56h |
| 22 | 1.2.2.3 | Diagrammes de séquence |  | 10d | 2008-10-03 A | 2008-10-14 A | 20 | 100% |  | 2008-10-03 | 2008-10-14 | 10d |  |  | Tony [50%]; Elodie [50%]; Bryan [50%] | 68.11h | 68.11h |
| 23 | 1.2.3 | Estimation des délais |  | 9d | 2008-09-23 A | 2008-10-01 A | 18 | 100% |  | 2008-09-23 | 2008-10-01 | 9d |  | start no earlier than 2008-09-22 | Tony [50%]; Pierrick [50%] | 63h | 63h |
| 24 | 1.2.4 | Contraintes techniques |  | 11d | 2008-10-03 A | 2008-10-13 A |  | 100% |  | 2008-10-03 | 2008-10-13 | 11d |  | start no earlier than 2008-10-03 | Bryan [50%]; Remi [50%] | 77h | 77h |
| 25 | 1.2.5 | Ergonomie |  | 11d | 2008-10-07 A | 2008-10-17 A |  | 100% |  | 2008-10-07 | 2008-10-17 | 11d |  | start no earlier than 2008-10-07 | Bryan [50%]; Pierrick [50%]; Remi [50%] | 115.5h | 115.5h |
| 26 | 1.2.6 | Etude qualité |  | 12d | 2008-10-03 A | 2008-10-16 A |  | 100% |  | 2008-10-03 | 2008-10-16 | 12d |  | start no earlier than 2008-10-03 | Elodie [50%]; Tony [50%] | 49h | 49h |
| 27 | 1.2.7 | Rapport préalable |  | 5d | 2008-10-18 A | 2008-10-22 A | 18, 23, 24, 26, 25, 21, 22 | 100% |  | 2008-10-18 | 2008-10-22 | 5d |  | start no earlier than 2008-10-16 | Remi; Elodie; Bryan; Tony; Pierrick | 161h | 161h |
| 28 | 1.2.8 | Rendus 1 | milestone | 0d | 2008-10-23 A | 2008-10-23 A | 27 | 100% |  | 2008-10-23 | 2008-10-23 | 0d |  | must start on 2008-10-23 |  |  |  |
| 29 | 1.3 | Retour sur le Rendu 1 | milestone | 0d | 2008-11-03 A | 2008-11-03 A |  | 100% |  | 2008-11-03 | 2008-11-03 | 0d |  | start no earlier than 2008-11-03 |  |  |  |

Notes:
- 19: ** Analyse UML / Diagrammes de classes / Diagrammes des cas dutilisation / Diagrammes de séquence
- 25: Maquettes de l'IHM
- 28: ** Analyse UML / Diagrammes de classes / Diagrammes des cas dutilisation / Diagrammes de séquence / ** Les précisions et reformulations du cahier des charges que vous aurez validé avec la MOA par échanges d'emails / ** Maquette des IHM / ** Planning / PAQ
- 29: Rendez vous par groupe pour faire le point sur le cahier des charges et les interfaces papiers (MOA). / Retour sur les documents remis au premier rendu

| ID | WBS | Task | Type | Duration | Start | Finish | Predecessors | Complete | Remaining | Baseline start | Baseline finish | Baseline duration | Total slack | Free slack | Constraint | Resources | Work | Actual work |
| --- | --- | --- | --- | --- | --- | --- | --- | --- | --- | --- | --- | --- | --- | --- | --- | --- | --- | --- |
| 30 | 1.4 | **Etude technique** |  | 28d | 2008-10-24 A | 2008-11-20 |  | 42% | 16.23d | 2008-10-24 | 2008-11-20 | 28d | 0d |  |  |  | 504h | 136.5h |
| 31 | 1.4.1 | Description des modules |  | 5d | 2008-10-24 A | 2008-10-28 | 28 | 50% | 2.5d | 2008-10-24 | 2008-10-28 | 5d | 19.5d | 16d |  | Pierrick; Elodie; Remi | 105h | 52.5h |
| 32 | 1.4.2 | **Mise à jour des diagrammes** |  | 3d | 2008-11-03 | 2008-11-06 |  |  |  | 2008-11-03 | 2008-11-06 | 3d | 4.5d |  |  |  | 66.5h |  |
| 33 | 1.4.2.1 | Diagramme de classes |  | 3d | 2008-11-03 | 2008-11-06 | 29 |  |  | 2008-11-03 | 2008-11-06 | 3d | 4.5d | 0d |  | Bryan [50%]; Tony [50%]; Elodie [50%] | 21h |  |
| 34 | 1.4.2.2 | Diagrammes des cas d'utilisation |  | 2d | 2008-11-04 | 2008-11-05 | 29 |  |  | 2008-11-04 | 2008-11-05 | 2d | 11.5d | 8d |  | Pierrick [50%]; Remi [50%] | 14h |  |
| 35 | 1.4.2.3 | Diagrammes de séquence |  | 3d | 2008-11-04 | 2008-11-06 | 29 |  |  | 2008-11-04 | 2008-11-06 | 3d | 10.5d | 7d | start no earlier than 2008-11-04 | Tony [50%]; Elodie [50%]; Bryan [50%] | 31.5h |  |
| 36 | 1.4.3 | Spécification des plans de test |  | 6d | 2008-11-07 | 2008-11-12 | 33 |  |  | 2008-11-07 | 2008-11-12 | 6d | 4.5d | 1d |  | Bryan [50%]; Elodie [50%]; Remi [50%]; Pierrick [50%]; Tony | 126h |  |
| 37 | 1.4.4 | Algorithme de calcul |  | 10d | 2008-10-24 A | 2008-11-02 A | 28 | 100% |  | 2008-10-24 | 2008-11-02 | 10d |  |  |  | Bryan; Tony | 77h | 77h |
| 38 | 1.4.5 | Plan de développement | milestone | 0d | 2008-10-28 A | 2008-10-28 A | 31 | 100% |  | 2008-10-29 | 2008-11-02 | 5d |  |  |  | Pierrick; Elodie; Remi |  |  |
| 39 | 1.4.6 | Mise à jour du Planning |  | 2d | 2008-11-04 A | 2008-11-05 A |  | 100% |  | 2008-11-04 | 2008-11-05 | 2d |  |  | start no earlier than 2008-11-04 | Tony [50%] | 7h | 7h |
| 40 | 1.4.7 | PAQ complété |  | 3.5d | 2008-11-14 | 2008-11-17 | 31, 36, 39, 38, 37, 35, 34 |  |  | 2008-11-14 | 2008-11-17 | 3.5d | 3.5d |  | start no earlier than 2008-11-14 | Bryan; Elodie; Pierrick; Remi; Tony | 122.5h |  |
| 41 | 1.4.8 | Rendu 2 | milestone | 0d | 2008-11-20 | 2008-11-20 | 40 |  |  | 2008-11-20 | 2008-11-20 | 0d | 0d |  | must start on 2008-11-20 |  |  |  |
| 42 | 1.5 | Retour sur le rendu 2 | milestone | 0d | 2008-11-24 | 2008-11-24 |  |  |  | 2008-11-24 | 2008-11-24 | 0d | 1d | 0d | start no earlier than 2008-11-24 |  |  |  |
| 43 | 1.6 | **Réalisation** |  | 32d? | 2008-11-25 | 2009-01-06 |  |  |  | 2008-11-21 | 2008-12-10 | 20d | 1d |  |  |  | 2611h |  |
| 44 | 1.6.1 | **Codage** |  | 22d? | 2008-11-25 | 2008-12-16 | 42 |  |  | 2008-11-21 | 2008-11-30 | 10d | 1d | 0d |  |  | 980h |  |
| 45 | 1.6.1.1 | StreamInFolder(event) |  | 20d? | 2008-11-25 | 2008-12-14 |  |  |  |  |  |  | 3d |  |  | Pierrick | 140h |  |
| 46 | 1.6.1.2 | Algo |  | 20d? | 2008-11-25 | 2008-12-14 |  |  |  |  |  |  | 3d |  |  | Tony | 140h |  |
| 47 | 1.6.1.3 | graphNetwork |  | 20d? | 2008-11-25 | 2008-12-14 |  |  |  |  |  |  | 3d |  |  | Remi | 140h |  |
| 48 | 1.6.1.4 | iGoMaster |  | 20d? | 2008-11-25 | 2008-12-16 |  |  |  |  |  |  | 1d |  |  | Elodie | 140h |  |
| 49 | 1.6.1.5 | main |  | 20d? | 2008-11-25 | 2008-12-16 |  |  |  |  |  |  | 1d |  |  | Elodie | 140h |  |
| 50 | 1.6.1.6 | IHM |  | 20d? | 2008-11-25 | 2008-12-14 |  |  |  |  |  |  | 3d |  |  | Bryan | 140h |  |
| 51 | 1.6.1.7 | XmlFeature |  | 20d? | 2008-11-25 | 2008-12-14 |  |  |  |  |  |  | 3d |  |  | Bryan | 140h |  |
| 52 | 1.6.2 | **Documentations** |  | 10d? | 2008-12-17 | 2009-01-06 | 44 |  |  | 2008-12-01 | 2008-12-10 | 10d | 9d |  |  |  | 490h |  |
| 53 | 1.6.2.1 | StreamInFolder(event) |  | 10d? | 2008-12-17 | 2009-01-06 |  |  |  |  |  |  | 9d |  |  | Pierrick | 70h |  |
| 54 | 1.6.2.2 | Algo |  | 10d? | 2008-12-17 | 2009-01-06 |  |  |  |  |  |  | 9d |  |  | Tony | 70h |  |
| 55 | 1.6.2.3 | graphNetwork |  | 10d? | 2008-12-17 | 2009-01-06 |  |  |  |  |  |  | 9d |  |  | Remi | 70h |  |
| 56 | 1.6.2.4 | iGoMaster |  | 10d? | 2008-12-17 | 2009-01-06 |  |  |  |  |  |  | 9d |  |  | Elodie | 70h |  |
| 57 | 1.6.2.5 | main |  | 10d? | 2008-12-17 | 2009-01-06 |  |  |  |  |  |  | 9d |  |  | Elodie | 70h |  |
| 58 | 1.6.2.6 | IHM |  | 10d? | 2008-12-17 | 2009-01-06 |  |  |  |  |  |  | 9d |  |  | Bryan | 70h |  |
| 59 | 1.6.2.7 | XmlFeature |  | 10d? | 2008-12-17 | 2009-01-06 |  |  |  |  |  |  | 9d |  |  | Bryan | 70h |  |

Notes:
- 38: http://www.afic.asso.fr/Website/site/fra_rubriques_espaceentrepreneurs_businessplanplandedeveloppement.htm
- 41: 20/11 / ** Description de l'algorithme de calcul (et re-calcul) de litinéraire, écrit en pseudo-code / ** Diagramme de classes mis à jour / ** Un document décrivant votre environnement de développement (génération de code ?, IDE, librairies graphiques …), / ** Dossier de tests / ** Planning détaillé mis à jour
- 42: 24/11
- 44: Avec les commentaires

| ID | WBS | Task | Type | Duration | Start | Finish | Predecessors | Baseline start | Baseline finish | Baseline duration | Total slack | Free slack | Constraint | Resources | Work |
| --- | --- | --- | --- | --- | --- | --- | --- | --- | --- | --- | --- | --- | --- | --- | --- |
| 60 | 1.6.3 | **Tests unitaires** |  | 22d? | 2008-11-25 | 2008-12-16 | 44SS | 2008-11-21 | 2008-11-30 | 10d | 10d | 9d |  |  | 980h |
| 61 | 1.6.3.1 | StreamInFolder(event) |  | 20d? | 2008-11-25 | 2008-12-14 |  |  |  |  | 12d |  |  | Remi | 140h |
| 62 | 1.6.3.2 | Algo |  | 20d? | 2008-11-25 | 2008-12-16 |  |  |  |  | 10d |  |  | Elodie | 140h |
| 63 | 1.6.3.3 | graphNetwork |  | 20d? | 2008-11-25 | 2008-12-14 |  |  |  |  | 12d |  |  | Bryan | 140h |
| 64 | 1.6.3.4 | iGoMaster |  | 20d? | 2008-11-25 | 2008-12-14 |  |  |  |  | 12d |  |  | Tony | 140h |
| 65 | 1.6.3.5 | main |  | 20d? | 2008-11-25 | 2008-12-14 |  |  |  |  | 12d |  |  | Tony | 140h |
| 66 | 1.6.3.6 | IHM |  | 20d? | 2008-11-25 | 2008-12-14 |  |  |  |  | 12d |  |  | Pierrick | 140h |
| 67 | 1.6.3.7 | XmlFeature |  | 20d? | 2008-11-25 | 2008-12-14 |  |  |  |  | 12d |  |  | Remi | 140h |
| 68 | 1.6.4 | Plan de recettes |  | 9.5d | 2008-12-17 | 2009-01-06 | 44 | 2008-12-01 | 2008-12-10 | 9.5d | 4.5d | 3.5d |  | Tony [50%]; Elodie [50%] | 66.5h |
| 69 | 1.6.5 | Plan mise en œuvre utilisateur |  | 9d | 2008-12-17 | 2009-01-05 | 44 | 2008-12-01 | 2008-12-09 | 9d | 1d | 0d | start no earlier than 2008-12-01 | Pierrick [50%]; Bryan [50%]; Remi [50%] | 94.5h |
| 70 | 1.7 | **Mise en œuvre** |  | 9d | 2009-01-06 | 2009-01-14 |  | 2008-12-10 | 2009-01-12 | 22.5d | 1d |  |  |  | 77h |
| 71 | 1.7.1 | Test d'integration |  | 2d | 2009-01-06 | 2009-01-07 | 60, 69 | 2008-12-10 | 2008-12-14 | 5d | 1d | 0d |  | Pierrick; Tony | 28h |
| 72 | 1.7.2 | Generalisation |  | 2d | 2009-01-08 | 2009-01-09 | 71 | 2008-12-15 | 2009-01-07 | 12.5d | 1d | 0d |  | Remi | 14h |
| 73 | 1.7.3 | PV de recette |  | 5d | 2009-01-10 | 2009-01-14 | 72, 68 | 2009-01-07 | 2009-01-12 | 5d | 1d |  |  | Elodie | 35h |
| 74 | 1.8 | Rendu final | milestone | 0d | 2009-01-15 | 2009-01-15 | 52, 73 | 2009-01-15 | 2009-01-15 | 0d | 0d |  | must start on 2009-01-15 |  |  |
| 75 | 1.9 | Préparation soutenance |  | 5d | 2009-01-20 | 2009-01-24 | 74 | 2009-01-20 | 2009-01-24 | 5d | 3d |  | start no earlier than 2009-01-20 | Bryan; Elodie; Pierrick; Remi; Tony | 175h |
| 76 | 1.10 | Soutenance | milestone | 0d | 2009-01-27 | 2009-01-27 | 75 | 2009-01-27 | 2009-01-27 | 0d | 0d |  | start no earlier than 2009-01-27 |  |  |

Notes:
- 74: 15/01 / ** Dossiers de spécifications et de conception détaillée mis à jour, / ** Dossiers de tests complets (y compris les traces de tests), / ** Votre planning final, votre charge consommée et un rapide retour dexpérience sur les points qui vous ont posé problème. / ** La documentation dinstallation / ** L'ensemble de vos sources et de vos fichiers de tests.
- 76: ** 10 minutes de présentation de votre produit, de ses atouts, de vos choix techniques/algorithmiques (avec transparents dont vous prévoirez deux copies papiers) / ** 5 minutes de démonstration / ** 5 minutes de retour d'expérience sur le projet / ** 10 minutes de questions / ** Retour sur votre rendu / Prévoir un plan de soutenance (à nous laisser) qui décrira les points forts de la soutenance / et notamment donnera une description des fonctionnalités illustrées dans la partie démonstration.
